# Assignment1

Schedule from MS Project, 2022-05-31 to 2023-01-16.

## Calendars

- Standard: Mon-Fri 08:00-12:00, 13:00-17:00; Sat-Sun off.

## Resources

| Resource |
| --- |
| Project Manager1 |
| Requirement Engineers 1 |
| System Engineers 1 |
| Programmers/Software Engineers 1 |
| Test Engineers 1 |
| Documentation Engineers 1 |
| Requirement Engineers 2 |
| Requirement Engineers 3 |
| Requirement Engineers 4 |
| System Engineers 2 |
| Programmers/Software Engineers 2 |
| Test Engineers 2 |
| Documentation Engineers 2 |
| Programmers/Software Engineers 3 |
| Programmers/Software Engineers 4 |
| Programmers/Software Engineers 5 |
| Programmers/Software Engineers 6 |
| Test Engineers 3 |
| Test Engineers 4 |
| Test Engineers 5 |
| System Engineers 3 |
| Test Engineers 6 |
| Test Engineers 7 |
| Documentation Engineers 3 |
| System Engineers 4 |
| Programmers/Software Engineers 7 |
| Programmers/Software Engineers 8 |
| Project Manager 2 |
| Project Manager 3 |
| Project Manager 4 |
| Project Manager 5 |
| Project Manager 6 |
| Requirement Engineers 5 |
| Requirement Engineers 10 |
| Requirement Engineers 9 |
| Requirement Engineers 7 |
| Requirement Engineers 6 |
| Requirement Engineers 8 |
| System Engineers 5 |
| System Engineers 6 |
| System Engineers 7 |
| System Engineers 8 |
| System Engineers 9 |
| Programmers/Software Engineers 9 |
| Programmers/Software Engineers 10 |
| Programmers/Software Engineers 11 |
| Test Engineers 8 |
| Test Engineers 9 |
| Documentation Engineers 4 |
| Documentation Engineers 5 |
| Documentation Engineers 6 |
| Documentation Engineers 7 |
| Documentation Engineers 8 |
| Documentation Engineers 9 |
| Project Manager 7 |
| Project Manager 8 |
| System Engineers 10 |
| System Engineers 11 |
| System Engineers 12 |
| System Engineers 13 |
| Programmers/Software Engineers 12 |
| Programmers/Software Engineers 13 |
| Programmers/Software Engineers 14 |
| Programmers/Software Engineers 15 |
| Test Engineers 10 |
| Test Engineers 11 |
| Test Engineers 12 |

## Schedule

| ID | WBS | Task | Duration | Start | Finish | Predecessors | Total slack | Free slack | Resources | Work |
| --- | --- | --- | --- | --- | --- | --- | --- | --- | --- | --- |
| 1 | 1 | **Assignment 1** | 164.62d | 2022-05-31 | 2023-01-16 |  |  |  |  | 5329h |
| 2 | 1.1 | **Project Plan** | 10d | 2022-05-31 | 2022-06-13 |  | 154.62d |  |  | 289h |
| 3 | 1.1.1 | Write Plan | 26h | 2022-05-31 | 2022-06-03 |  | 154.62d | 0d | Project Manager1 | 26h |
| 4 | 1.1.2 | **Review Plan** | 5.88d | 2022-06-03 | 2022-06-13 |  | 154.62d |  |  | 256h |
| 5 | 1.1.2.1 | Preparation for review | 26h | 2022-06-03 | 2022-06-08 | 3 | 154.62d | 0d | Documentation Engineers 1; Programmers/Software Engineers 1; Requirement Engineers 1; System Engineers 1; Test Engineers 1 | 130h |
| 6 | 1.1.2.2 | Review Meeting | 21h | 2022-06-08 | 2022-06-13 | 5 | 154.62d | 0d | Documentation Engineers 1; Programmers/Software Engineers 1; Project Manager1; Requirement Engineers 1; System Engineers 1; Test Engineers 1 | 126h |
| 7 | 1.1.3 | Rework | 7h | 2022-06-13 | 2022-06-13 | 6 | 154.62d |  | Project Manager1 | 7h |
| 8 | 1.2 | **Requirements** | 15.38d | 2022-05-31 | 2022-06-21 |  | 0d |  |  | 400h |
| 9 | 1.2.1 | Write requirements | 43h | 2022-05-31 | 2022-06-07 |  | 0d |  | Requirement Engineers 2 | 43h |
| 10 | 1.2.2 | Write Use Case Model | 6h | 2022-05-31 | 2022-05-31 |  | 4.62d |  | Requirement Engineers 3; Requirement Engineers 4 | 12h |
| 11 | 1.2.3 | **Review Requirements/ Use Case Model** | 9.12d | 2022-06-07 | 2022-06-20 |  | 0d |  |  | 324h |
| 12 | 1.2.3.1 | Preparation for review | 41h | 2022-06-07 | 2022-06-14 | 9, 10 | 0d |  | Documentation Engineers 2; Programmers/Software Engineers 2; System Engineers 2; Test Engineers 2 | 164h |
| 13 | 1.2.3.2 | Review Meeting | 32h | 2022-06-14 | 2022-06-20 | 12 | 0d |  | Requirement Engineers 1; Documentation Engineers 2; Programmers/Software Engineers 2; System Engineers 2; Test Engineers 2 | 160h |
| 14 | 1.2.4 | Rework | 7h | 2022-06-20 | 2022-06-21 | 13 | 0d |  | Requirement Engineers 1; Requirement Engineers 3; Requirement Engineers 4 | 21h |
| 15 | 1.3 | **Analysis** | 4.62d | 2022-06-21 | 2022-06-27 | 14 | 0d |  |  | 124h |
| 16 | 1.3.1 | Write Analysis Document | 7h | 2022-06-21 | 2022-06-22 |  | 0d |  | System Engineers 1; System Engineers 2 | 14h |
| 17 | 1.3.2 | **Review Analysis Document** | 2.62d | 2022-06-22 | 2022-06-24 |  | 0d |  |  | 92h |
| 18 | 1.3.2.1 | Preparation for Analysis Document | 13h | 2022-06-22 | 2022-06-23 | 16 | 0d |  | Documentation Engineers 1; Programmers/Software Engineers 1; Requirement Engineers 1; Test Engineers 1 | 52h |
| 19 | 1.3.2.2 | Review Meeting | 1d | 2022-06-23 | 2022-06-24 | 16, 18 | 0d |  | Documentation Engineers 1; Programmers/Software Engineers 1; Requirement Engineers 1; Test Engineers 1; System Engineers 2 | 40h |
| 20 | 1.3.3 | Rework | 9h | 2022-06-24 | 2022-06-27 | 19 | 0d |  | System Engineers 1; System Engineers 2 | 18h |
| 21 | 1.4 | **Design** | 24.75d | 2022-06-28 | 2022-08-01 | 20 | 0d |  |  | 677h |
| 22 | 1.4.1 | Write DD | 26h | 2022-06-28 | 2022-07-01 |  | 0d |  | System Engineers 1; System Engineers 2 | 52h |
| 23 | 1.4.2 | **Review DD** | 12.75d | 2022-07-01 | 2022-07-19 |  | 0d |  |  | 442h |
| 24 | 1.4.2.1 | Preparation for DD | 68h | 2022-07-01 | 2022-07-13 | 22 | 0d |  | Documentation Engineers 1; Programmers/Software Engineers 1; Requirement Engineers 1; Test Engineers 1 | 272h |
| 25 | 1.4.2.2 | Review Meeting | 34h | 2022-07-13 | 2022-07-19 | 24 | 0d |  | Documentation Engineers 1; Programmers/Software Engineers 1; Requirement Engineers 1; System Engineers 1; Test Engineers 1 | 170h |
| 26 | 1.4.3 | Rework | 24h | 2022-07-20 | 2022-07-22 | 25 | 0d |  | System Engineers 1; System Engineers 2 | 48h |
| 27 | 1.4.4 | Write Data Model (DM) | 16h | 2022-07-25 | 2022-07-26 | 26 | 0d |  | System Engineers 1; System Engineers 2 | 32h |

| ID | WBS | Task | Duration | Start | Finish | Predecessors | Total slack | Free slack | Resources | Work |
| --- | --- | --- | --- | --- | --- | --- | --- | --- | --- | --- |
| 28 | 1.4.5 | **Review DM** | 2.25d | 2022-07-27 | 2022-07-29 |  | 0d |  |  | 79h |
| 29 | 1.4.5.1 | Preparation for DM | 11h | 2022-07-27 | 2022-07-28 | 27 | 0d |  | Documentation Engineers 1; Programmers/Software Engineers 1; Requirement Engineers 1; Test Engineers 1 | 44h |
| 30 | 1.4.5.2 | Review Meeting | 7h | 2022-07-28 | 2022-07-29 | 29 | 0d |  | Documentation Engineers 1; Programmers/Software Engineers 1; Requirement Engineers 1; System Engineers 1; Test Engineers 1 | 35h |
| 31 | 1.4.6 | Rework | 12h | 2022-07-29 | 2022-08-01 | 30 | 0d |  | System Engineers 1; System Engineers 2 | 24h |
| 32 | 1.5 | **Coding and unit test** | 64.75d | 2022-08-01 | 2022-10-31 |  | 0d |  |  | 1466h |
| 33 | 1.5.1 | Write Code | 129h | 2022-08-01 | 2022-08-23 | 31 | 0d |  | Programmers/Software Engineers 3; Programmers/Software Engineers 4; Programmers/Software Engineers 5; Programmers/Software Engineers 6 | 516h |
| 34 | 1.5.2 | **Unit Testing** | 37d | 2022-08-23 | 2022-10-13 |  | 0d |  |  | 736h |
| 35 | 1.5.2.1 | Prepare/Execute Test Cases | 72h | 2022-08-23 | 2022-09-05 | 33 | 0d |  | Programmers/Software Engineers 3; Programmers/Software Engineers 4; Programmers/Software Engineers 5; Programmers/Software Engineers 6 | 288h |
| 36 | 1.5.2.2 | Fix Found Defects | 112h | 2022-09-05 | 2022-09-23 | 35 | 0d |  | Programmers/Software Engineers 5; Programmers/Software Engineers 6 | 224h |
| 37 | 1.5.2.3 | Test Fixed Defects | 112h | 2022-09-23 | 2022-10-13 | 36 | 0d |  | Programmers/Software Engineers 3; Programmers/Software Engineers 4 | 224h |
| 38 | 1.5.3 | **Code Inspection** | 9d | 2022-10-13 | 2022-10-26 |  | 0d |  |  | 172h |
| 39 | 1.5.3.1 | Preparation for Code Inspection | 44h | 2022-10-13 | 2022-10-21 | 37 | 0d |  | Programmers/Software Engineers 7; Programmers/Software Engineers 8 | 88h |
| 40 | 1.5.3.2 | Code Inspection Meeting | 28h | 2022-10-21 | 2022-10-26 | 39 | 0d |  | Programmers/Software Engineers 7; Programmers/Software Engineers 8; Programmers/Software Engineers 5 | 84h |
| 41 | 1.5.4 | Rework | 21h | 2022-10-26 | 2022-10-31 | 40 | 0d |  | Programmers/Software Engineers 5; Programmers/Software Engineers 6 | 42h |
| 42 | 1.6 | **System Integration Testing** | 109.12d | 2022-06-21 | 2022-11-21 |  | 40.12d |  |  | 701h |
| 43 | 1.6.1 | Write test plan (TP) | 42h | 2022-06-21 | 2022-06-28 | 14 | 84d | 0d | Test Engineers 2; Test Engineers 3; Test Engineers 4; Test Engineers 5 | 168h |
| 44 | 1.6.2 | **Review TP** | 4.88d | 2022-06-28 | 2022-07-05 |  | 84d |  |  | 174h |
| 45 | 1.6.2.1 | Preparation for TP | 21h | 2022-06-28 | 2022-07-01 | 43 | 84d | 0d | System Engineers 3; Documentation Engineers 2; Programmers/Software Engineers 2; Requirement Engineers 2 | 84h |
| 46 | 1.6.2.2 | Review TP Meeting | 18h | 2022-07-01 | 2022-07-05 | 45 | 84d | 0d | System Engineers 3; Test Engineers 3; Documentation Engineers 2; Programmers/Software Engineers 2; Requirement Engineers 2 | 90h |
| 47 | 1.6.3 | Rework | 13h | 2022-07-05 | 2022-07-07 | 46 | 137.5d |  | Test Engineers 2; Test Engineers 3 | 26h |
| 48 | 1.6.4 | Execute TP (test cases) | 27h | 2022-10-31 | 2022-11-03 | 41, 46 | 0d |  | Test Engineers 1; Test Engineers 2 | 54h |
| 49 | 1.6.5 | Fix Found Defects | 62h | 2022-11-03 | 2022-11-15 | 48 | 0d |  | Test Engineers 1; Test Engineers 2; Test Engineers 3 | 186h |
| 50 | 1.6.6 | Test Fixed Defects | 31h | 2022-11-15 | 2022-11-21 | 49 | 0d |  | Test Engineers 3; Test Engineers 4; Test Engineers 5 | 93h |
| 51 | 1.7 | **Load, Stress, and Performance Testing** | 40.12d | 2022-11-21 | 2023-01-16 | 50 | 0d |  |  | 1067h |
| 52 | 1.7.1 | Write test plan (TP) | 101h | 2022-11-21 | 2022-12-08 | 50 | 0d |  | Test Engineers 3; Test Engineers 6; Test Engineers 7 | 303h |

| ID | WBS | Task | Duration | Start | Finish | Predecessors | Total slack | Free slack | Resources | Work |
| --- | --- | --- | --- | --- | --- | --- | --- | --- | --- | --- |
| 53 | 1.7.2 | **Review TP** | 11.88d | 2022-12-08 | 2022-12-23 |  | 0d |  |  | 412h |
| 54 | 1.7.2.1 | Preparation for TP | 63h | 2022-12-08 | 2022-12-19 | 52 | 0d |  | Documentation Engineers 2; Programmers/Software Engineers 3; Requirement Engineers 3; System Engineers 3 | 252h |
| 55 | 1.7.2.2 | Review TP Meeting | 32h | 2022-12-20 | 2022-12-23 | 54 | 0d |  | Documentation Engineers 2; Programmers/Software Engineers 3; Requirement Engineers 3; System Engineers 3; Test Engineers 3 | 160h |
| 56 | 1.7.3 | Rework | 9h | 2022-12-26 | 2022-12-27 | 55 | 0d |  | Test Engineers 1; Test Engineers 2; Test Engineers 3 | 27h |
| 57 | 1.7.4 | Execute TP (test cases) | 63h | 2022-12-27 | 2023-01-05 | 41, 56 | 0d |  | Test Engineers 3; Test Engineers 4; Test Engineers 5 | 189h |
| 58 | 1.7.5 | Fix Found Defects | 30h | 2023-01-06 | 2023-01-11 | 57 | 0d |  | Test Engineers 1; Test Engineers 2; Test Engineers 3 | 90h |
| 59 | 1.7.6 | Test Fixed Defects | 23h | 2023-01-11 | 2023-01-16 | 58 | 0d |  | Test Engineers 4; Test Engineers 5 | 46h |
| 60 | 1.8 | **Documentation** | 9.75d | 2022-06-21 | 2022-07-05 | 14 | 139.5d |  |  | 225h |
| 61 | 1.8.1 | User Documentation | 12h | 2022-06-21 | 2022-06-22 | 14 | 139.5d | 0d | Documentation Engineers 2; Documentation Engineers 3 | 24h |
| 62 | 1.8.2 | **Review UD** | 5.12d | 2022-06-22 | 2022-06-29 |  | 139.5d |  |  | 176h |
| 63 | 1.8.2.1 | Preparation for UD Review | 29h | 2022-06-22 | 2022-06-28 | 61 | 139.5d | 0d | Programmers/Software Engineers 5; Test Engineers 6; System Engineers 4; Project Manager1 | 116h |
| 64 | 1.8.2.2 | Review UD Meeting | 12h | 2022-06-28 | 2022-06-29 | 63 | 139.5d | 0d | Documentation Engineers 3; Programmers/Software Engineers 3; Test Engineers 6; System Engineers 4; Project Manager1 | 60h |
| 65 | 1.8.3 | Rework | 25h | 2022-06-30 | 2022-07-05 | 64 | 139.5d |  | Documentation Engineers 3 | 25h |
| 66 | 1.9 | **Training Material** | 13.88d | 2022-05-31 | 2022-06-17 |  | 150.75d |  |  | 380h |
| 67 | 1.9.1 | Tutorial | 13h | 2022-05-31 | 2022-06-01 |  | 150.75d | 0d | Documentation Engineers 2; Documentation Engineers 3; Documentation Engineers 1 | 39h |
| 68 | 1.9.2 | **Review Tutorial** | 9.12d | 2022-06-01 | 2022-06-14 |  | 150.75d |  |  | 316h |
| 69 | 1.9.2.1 | Preparation for Tutorial Review | 49h | 2022-06-01 | 2022-06-09 | 67 | 150.75d | 0d | Test Engineers 6; Programmers/Software Engineers 6; Requirement Engineers 4; System Engineers 4 | 196h |
| 70 | 1.9.2.2 | Review Tutorial Meeting | 24h | 2022-06-09 | 2022-06-14 | 69 | 150.75d | 0d | Documentation Engineers 3; Programmers/Software Engineers 6; Requirement Engineers 4; System Engineers 4; Test Engineers 6 | 120h |
| 71 | 1.9.3 | Rework | 25h | 2022-06-14 | 2022-06-17 | 70 | 150.75d |  | Documentation Engineers 3 | 25h |
